# Detalle nivelado de implementación y precedencias del SD7

Schedule from GanttProject, 2027-02-01 to 2031-09-30.
LafroX
Red SD7 generada desde T-14, T-15 y Anexo 7.B. El calendario es nominal. Las esperas de la carta nivelada se conservan en los desfases publicados. Duración usa el calendario del motor, con excepciones para representar fechas civiles. Días hábiles T-15 conserva la duración nominal de la fuente. Los ID coinciden entre vistas.

## Calendars

- Project calendar: Mon-Fri working; Sat-Sun off. Exceptions (off unless hours are given): 2027-03-26 to 2027-03-27, 2027-05-01, 2027-05-21, 2027-06-21, 2027-06-28, 2027-07-16, 2027-08-15, 2027-09-17 to 2027-09-19, 2027-10-11, 2027-10-31 to 2027-11-01, 2027-12-08, 2027-12-25, 2028-01-01, 2028-04-14 to 2028-04-15, 2028-05-01, 2028-05-21, 2028-06-20, 2028-06-26, 2028-07-16, 2028-08-15, 2028-09-18 to 2028-09-19, 2028-10-09, 2028-10-27, 2028-11-01, 2028-12-08, 2028-12-25, 2029-01-01, 2029-03-30 to 2029-03-31, 2029-05-01, 2029-05-21, 2029-06-20, 2029-07-02, 2029-07-16, 2029-08-15, 2029-09-17 to 2029-09-19, 2029-10-15, 2029-11-01 to 2029-11-02, 2029-12-08, 2029-12-25, 2030-01-01, 2030-04-19 to 2030-04-20, 2030-05-01, 2030-05-21, 2030-06-21, 2030-06-29, 2030-07-16, 2030-08-15, 2030-09-18 to 2030-09-20, 2030-10-12, 2030-10-31 to 2030-11-01, 2030-12-08, 2030-12-25, 2031-01-01, 2031-04-11 to 2031-04-12, 2031-05-01, 2031-05-21, 2031-06-21, 2031-06-29, 2031-07-16, 2031-08-15, 2031-09-18 to 2031-09-19.

## Schedule

| ID | Task | Type | Duration | Start | Finish | Predecessors | Días hábiles T-15 |
| --- | --- | --- | --- | --- | --- | --- | --- |
| 1 | 1.1.1 Acta de constitución del proyecto, firmada con la Contraparte Técnica |  | 7d | 2027-02-01 | 2027-02-09 |  | 7 |
| 2 | 1.1.2 Documento de validación con el CLIENTE de los problemas y metas del proyecto |  | 7d | 2027-02-01 | 2027-02-09 | 1SS | 7 |
| 3 | 1.1.3 Acta de confirmaciones iniciales con el CLIENTE (inicio, lácteos, ventanas y acuse tributario) |  | 7d | 2027-02-01 | 2027-02-09 | 1SS | 7 |
| 4 | 1.3.1 Registro de interesados con su influencia, interés y estrategia |  | 7d | 2027-02-01 | 2027-02-09 | 1SS | 7 |
| 5 | 1.3.2 Plan de comunicaciones con calendario y canales por grupo de interés |  | 7d | 2027-02-01 | 2027-02-09 | 4SS | 7 |
| 6 | 1.8.1 Matriz de cumplimiento normativo por obligación legal, con su control y su evidencia |  | 7d | 2027-02-01 | 2027-02-09 | 1SS | 7 |
| 7 | 1.8.2 Acuerdo de tratamiento de datos personales con el CLIENTE |  | 7d | 2027-02-01 | 2027-02-09 | 1SS | 7 |
| 8 | 2.1.1 Documento de especificación de requerimientos y línea base de alcance de la Etapa 1 (H1) |  | 7d | 2027-02-01 | 2027-02-09 | 2SS | 7 |
| 9 | 2.1.5 Especificación de interfaces heredadas y perfil de intercambio con cadenas |  | 7d | 2027-02-01 | 2027-02-09 | 1SS | 7 |
| 10 | 2.4.1 Plano de la sala técnica de Talca, con su cálculo eléctrico y térmico |  | 20d | 2027-02-01 | 2027-02-26 |  | 20 |
| 11 | 2.4.2 Plano de distribución de los racks R01 de servidores y R02 de comunicaciones |  | 20d | 2027-02-01 | 2027-02-26 | 10SS | 20 |
| 12 | 8.1.4 Especificación y compra del sistema de cadena de frío |  | 42d | 2027-02-01 | 2027-03-31 |  | 42 |
| 13 | 2.1.4 Captura de reglas de ruteo |  | 64d | 2027-02-01 | 2027-04-30 |  | 64 |
| 14 | Etapa 1 · Desarrollo (meses 1 a 12) |  | 253d | 2027-02-01 | 2028-02-01 |  | 252 |
| 15 | 1.2.1 Plan para la dirección del proyecto y calendario de congelamientos |  | 7d | 2027-02-10 | 2027-02-18 | 1 | 7 |
| 16 | 1.2.2 EDT y diccionario de la EDT (línea base del alcance) |  | 7d | 2027-03-01 | 2027-03-09 | 8FS+13d | 7 |
| 17 | 1.2.3 Carta Gantt de 56 meses con los hitos H1 a H12 y la ruta crítica |  | 7d | 2027-03-01 | 2027-03-09 | 16SS | 7 |
| 18 | 1.2.4 Documento de nivelación de recursos y frentes de solapamiento |  | 7d | 2027-03-01 | 2027-03-09 | 17SS | 7 |
| 19 | 1.4.1 Plan de calidad y plan de pruebas |  | 7d | 2027-03-01 | 2027-03-09 | 8FS+13d | 7 |
| 20 | 1.5.1 Plan de riesgos y registro inicial de riesgos según ISO 31000 |  | 7d | 2027-03-01 | 2027-03-09 | 15FS+6d | 7 |
| 21 | 1.8.3 Registro de actividades de tratamiento y evaluación de impacto en protección de datos |  | 7d | 2027-03-01 | 2027-03-09 | 7FS+13d | 7 |
| 22 | 2.1.3 Matriz de trazabilidad: requerimiento, módulo, paquete y prueba (H1) |  | 7d | 2027-03-01 | 2027-03-09 | 8FS+13d, 16SS | 7 |
| 23 | 2.2.1 Documento de arquitectura lógica: capas, módulos M1 a M12 e interfaces |  | 20d | 2027-03-01 | 2027-03-29 | 8SS+20d, 38FF+4d | 20 |
| 24 | 2.2.2 Documento de arquitectura física híbrida |  | 20d | 2027-03-01 | 2027-03-29 | 8FS+13d, 10SS+20d | 20 |
| 25 | 2.2.3 Modelo de datos y diccionario de datos, con la trazabilidad por lote |  | 20d | 2027-03-01 | 2027-03-29 | 8FS+13d | 20 |
| 26 | 2.3.1 Plan de seguridad de la información |  | 20d | 2027-03-01 | 2027-03-29 | 6FS+13d, 23SS | 20 |
| 27 | 2.3.4 Matriz de clasificación de la información y matriz de controles |  | 20d | 2027-03-01 | 2027-03-29 | 6FS+13d | 20 |
| 28 | 2.6.1 Informe de investigación con usuarios de terreno |  | 20d | 2027-03-01 | 2027-03-29 | 4FS+13d | 20 |
| 29 | 7.2.1 Innovación 2: informe de medición inicial y contrato de evidencia (INN-02.P1) |  | 36d | 2027-03-01 | 2027-04-20 | 8FS+13d | 36 |
| 30 | 8.1.1 Especificación de compra de equipos de uso para el CLIENTE |  | 7d | 2027-03-01 | 2027-03-09 | 8FS+13d | 7 |
| 31 | 8.2.1 Contrato de los servicios de AWS |  | 7d | 2027-03-01 | 2027-03-09 | 24SS | 7 |
| 32 | 8.2.7 Contrato de SIM M2M y servicio satelital de los camiones con frío |  | 10d | 2027-03-01 | 2027-03-12 | 12SS+20d | 10 |
| 33 | 9.6.3 Diagnóstico del impacto organizacional por área y perfil, con agentes de cambio |  | 60d | 2027-03-01 | 2027-05-25 | 4FS+13d | 60 |
| 34 | 2.4.3 Plano de los gabinetes de borde de Concepción y de las plataformas de cross-docking |  | 19d | 2027-03-02 | 2027-03-29 | 10FS+1d | 19 |
| 35 | 8.1.2 Especificación y compra de la sala técnica, los racks, los servidores y los gabinetes de borde |  | 7d | 2027-03-02 | 2027-03-10 | 10FS+1d, 11FS+1d | 7 |
| 36 | H1 · Entrega de expediente | milestone | 0d | 2027-03-09 | 2027-03-09 | 18FS-1d, 22FS-1d | 0 |
| 37 | H1 · Revisión de la Contraparte (10 días hábiles) |  | 10d | 2027-03-10 | 2027-03-23 | 36FS+1d | 10 |
| 38 | H1 · Firma del acta | milestone | 0d | 2027-03-23 | 2027-03-23 | 37FS-1d | 0 |
| 39 | 1.6.1 Plan de Reversibilidad inicial |  | 7d | 2027-04-01 | 2027-04-09 | 24FS+2d | 7 |
| 40 | 2.3.3 Plan de respuesta a incidentes de seguridad |  | 12d | 2027-04-01 | 2027-04-16 | 26FS+2d | 12 |
| 41 | 2.5.1 Plan de continuidad del negocio (ISO 22301) y análisis de impacto |  | 21d | 2027-04-01 | 2027-04-29 | 24FS+2d | 21 |
| 42 | 2.5.2 Plan de continuidad TIC según ISO/IEC 27031 y plan de recuperación ante desastres |  | 21d | 2027-04-01 | 2027-04-29 | 24FS+2d, 41SS | 21 |
| 43 | 2.6.2 Prototipos y pruebas de usabilidad con participantes del CLIENTE |  | 21d | 2027-04-01 | 2027-04-29 | 28FS+2d | 21 |
| 44 | 2.7.1 Informe de validación del kit de cadena de frío en banco de pruebas |  | 22d | 2027-04-01 | 2027-04-30 | 12, 32FS+12d | 22 |
| 45 | 7.2.2 Innovación 2: circuito mínimo de reproducción en la preventa (INN-02.P2) |  | 49d | 2027-04-01 | 2027-06-09 | 29SS+22d, 52SF+36d | 49 |
| 46 | 7.3.1 Innovación 3: documento de familias priorizadas y parámetros aprobados (INN-03.P1) |  | 49d | 2027-04-01 | 2027-06-09 | 8FS+35d, 25SS+22d | 49 |
| 47 | 8.3.1 Piso técnico de la sala y recepción de obra civil de separación (RT-06.06) |  | 14d | 2027-04-01 | 2027-04-20 | 35FS+14d | 14 |
| 48 | 8.3.2 Sistema de energía de la sala instalado (UPS N+1, generador y PDU) |  | 14d | 2027-04-01 | 2027-04-20 | 35FS+14d | 14 |
| 49 | 8.3.3 Hardware de climatización de precisión N+1 instalado |  | 14d | 2027-04-01 | 2027-04-20 | 35FS+14d | 14 |
| 50 | 8.3.4 Hardware de detección temprana de incendio y extinción por agente limpio instalado |  | 14d | 2027-04-01 | 2027-04-20 | 35FS+14d | 14 |
| 51 | 2.8.1 Acta de aprobación de la arquitectura, el plan de seguridad y el modelo de datos (H2) |  | 9d | 2027-04-19 | 2027-04-29 | 23FS+14d, 24FS+14d, 25FS+14d, 26FS+14d, 27FS+14d, 40 | 9 |
| 52 | 7.2.1 · Fin de referencia para la precedencia | milestone | 0d | 2027-04-20 | 2027-04-20 | 29FS-1d | 0 |
| 53 | H2 · Entrega de expediente | milestone | 0d | 2027-04-26 | 2027-04-26 | 54SS | 0 |
| 54 | H2 · Evidencia disponible (2.8.1) | milestone | 0d | 2027-04-26 | 2027-04-26 | 23FS+19d, 24FS+19d, 25FS+19d, 26FS+19d, 27FS+19d, 40FS+5d, 51SS+5d | 0 |
| 55 | H2 · Revisión de la Contraparte (10 días hábiles) |  | 10d | 2027-04-27 | 2027-05-10 | 53FS+1d | 10 |
| 56 | 2.8.1 · Cierre del paquete | milestone | 0d | 2027-04-29 | 2027-04-29 | 51FS-1d, 54SS+3d | 0 |
| 57 | 2.6.3 Indicadores de usabilidad comprometidos por transacción crítica |  | 20d | 2027-05-03 | 2027-05-31 | 43FS+1d | 20 |
| 58 | 2.7.2 Mapeo térmico por tipo de carrocería |  | 19d | 2027-05-03 | 2027-05-28 | 44 | 19 |
| 59 | 3.1.4 Cadena de integración y entrega continua, e infraestructura como código |  | 20d | 2027-05-03 | 2027-05-31 | 60SS | 20 |
| 60 | 3.2.1 Servicio de nube para la aplicación y los portales |  | 20d | 2027-05-03 | 2027-05-31 | 31FS+37d | 20 |
| 61 | 3.2.2 Servicio de nube de base de datos, caché y mensajería |  | 20d | 2027-05-03 | 2027-05-31 | 31FS+37d | 20 |
| 62 | 3.2.3 Servicio de nube de ingesta de IoT, telemetría cruda y plataforma analítica |  | 20d | 2027-05-03 | 2027-05-31 | 31FS+37d | 20 |
| 63 | 3.2.4 Servicio de nube de respaldo inmutable y réplica entre regiones |  | 20d | 2027-05-03 | 2027-05-31 | 31FS+37d | 20 |
| 64 | 3.2.5 Servicio de nube de seguridad y gobierno, y detección en endpoints |  | 20d | 2027-05-03 | 2027-05-31 | 31FS+37d | 20 |
| 65 | 8.2.2 Suscripción del servicio de gestión de dispositivos y de detección en endpoints |  | 7d | 2027-05-03 | 2027-05-11 | 31FS+37d | 7 |
| 66 | 8.2.4 Contrato de fibra óptica de los CD de Talca y Concepción |  | 7d | 2027-05-03 | 2027-05-11 | 24FS+24d | 7 |
| 67 | 8.2.5 Contrato de planes LTE con dos proveedores (ocho planes) |  | 7d | 2027-05-03 | 2027-05-11 | 24FS+24d | 7 |
| 68 | 8.2.6 Contrato de Starlink para los cinco sitios |  | 7d | 2027-05-03 | 2027-05-11 | 34FS+24d | 7 |
| 69 | 8.3.5 Acta de recepción técnica de la sala |  | 14d | 2027-05-03 | 2027-05-20 | 35FS+36d, 47FS+8d, 48FS+8d, 49FS+8d, 50FS+8d | 14 |
| 70 | 8.4.1 Cableado de cobre Cat6A y fibra OM4 tendido, con dos ductos de ingreso independientes |  | 14d | 2027-05-03 | 2027-05-20 | 11FS+44d, 47FS+8d | 14 |

Notes:
- 1: 80 HH · responsable JP · ejecución JP · Inicio del contrato
- 2: 80 HH · responsable JP · ejecución JP · 1.1.1 CC
- 3: 80 HH · responsable JP · ejecución JP · 1.1.1 CC
- 4: 80 HH · responsable JP · ejecución JP · 1.1.1 CC
- 5: 80 HH · responsable JP · ejecución JP · 1.3.1 CC
- 6: 80 HH · responsable SEG · ejecución SEG · 1.1.1 CC
- 7: 80 HH · responsable SEG · ejecución SEG · 1.1.1 CC
- 8: 80 HH · responsable ARQ · ejecución ARQ · 1.1.2 CC
- 9: 80 HH · responsable ARQ · ejecución ARQ · 1.1.1 CC
- 10: 240 HH · responsable SRE · ejecución SRE · Inicio del contrato
- 11: 240 HH · responsable SRE · ejecución SRE · 2.4.1 CC
- 12: 240 HH · responsable ARQ · ejecución ARQ · Especificación SD4; ocho semanas de homologación móvil
- 15: 80 HH · responsable JP · ejecución JP · 1.1.1
- 16: 80 HH · responsable JP · ejecución JP · 2.1.1
- 17: 80 HH · responsable JP · ejecución JP · 1.2.2 CC
- 18: 80 HH · responsable JP · ejecución JP · 1.2.3 CC
- 19: 80 HH · responsable CAL · ejecución CAL · 2.1.1
- 20: 80 HH · responsable JP · ejecución JP · 1.2.1
- 21: 80 HH · responsable SEG · ejecución SEG · 1.8.2
- 22: 80 HH · responsable CAL · ejecución CAL · 2.1.1, 1.2.2 CC
- 23: 240 HH · responsable ARQ · ejecución ARQ · 2.1.1 (D-01, por etapa)
- 24: 240 HH · responsable ARQ · ejecución ARQ · 2.1.1, 2.4.1 CC
- 25: 240 HH · responsable DAT · ejecución DAT · 2.1.1
- 26: 240 HH · responsable SEG · ejecución SEG · 1.8.1, 2.2.1 CC
- 27: 240 HH · responsable SEG · ejecución SEG · 1.8.1
- 28: 240 HH · responsable IMP · ejecución IMP · 1.3.1
- 29: 240 HH · responsable CAL · ejecución CAL · 2.1.1
- 30: 80 HH · responsable ARQ · ejecución ARQ · 2.1.1
- 31: 80 HH · responsable SRE · ejecución SRE · 2.2.2 CC
- 32: 80 HH · responsable SRE · ejecución SRE · 8.1.4 (especificación, CC); servicio de banco antes de 2.7.1
- 33: 160 HH · responsable IMP · ejecución IMP · 1.3.1
- 34: 240 HH · responsable SRE · ejecución SRE · 2.4.1
- 35: 80 HH · responsable ARQ · ejecución ARQ · 2.4.1, 2.4.2 (D-09)
- 39: 80 HH · responsable JP · ejecución JP · 2.2.2
- 40: 240 HH · responsable SEG · ejecución SEG · 2.3.1
- 41: 240 HH · responsable SRE · ejecución SRE · 2.2.2
- 42: 240 HH · responsable SRE · ejecución SRE · 2.2.2, 2.5.1 CC
- 43: 240 HH · responsable IMP · ejecución IMP · 2.6.1
- 44: 341.33 HH · responsable SRE · ejecución SRE · 8.1.4, 8.2.7; prototipo Greengrass y TC58e
- 45: 240 HH · responsable CAL · ejecución CAL · 7.2.1 (contrato de evidencia)
- 46: 240 HH · responsable DAT · ejecución DAT · 2.1.1, 2.2.3 CC
- 47: 160 HH · responsable SRE · ejecución RED · 8.1.2 (D-10)
- 48: 160 HH · responsable SRE · ejecución RED · 8.1.2 (D-10)
- 49: 160 HH · responsable SRE · ejecución RED · 8.1.2 (D-10)
- 50: 160 HH · responsable SRE · ejecución RED · 8.1.2 (D-10)
- 51: 240 HH · responsable ARQ · ejecución ARQ · 2.2.1–2.2.3, 2.3.1, 2.3.3, 2.3.4
- 52: 240 HH · responsable CAL · ejecución CAL · 2.1.1
- 54: Expediente de arquitectura, seguridad y datos; cierre administrativo posterior
- 56: 240 HH · responsable ARQ · ejecución ARQ · 2.2.1–2.2.3, 2.3.1, 2.3.3, 2.3.4
- 57: 240 HH · responsable IMP · ejecución IMP · 2.6.2
- 58: 240 HH · responsable ARQ · ejecución ARQ · 2.7.1; Calidad del CLIENTE
- 59: 240 HH · responsable SRE · ejecución SRE · 3.2.1 CC; habilitación para QA tras el acta H2
- 60: 240 HH · responsable SRE · ejecución SRE · 8.2.1 (D-07)
- 61: 240 HH · responsable SRE · ejecución SRE · 8.2.1 (D-07)
- 62: 240 HH · responsable SRE · ejecución SRE · 8.2.1 (D-07)
- 63: 240 HH · responsable SRE · ejecución SRE · 8.2.1 (D-07)
- 64: 240 HH · responsable SEG · ejecución SEG · 8.2.1 (D-07)
- 65: 80 HH · responsable SRE · ejecución SRE · 8.2.1
- 66: 80 HH · responsable SRE · ejecución SRE · 2.2.2
- 67: 80 HH · responsable SRE · ejecución SRE · 2.2.2
- 68: 80 HH · responsable SRE · ejecución SRE · 2.4.3
- 69: 160 HH · responsable SRE · ejecución RED · 8.1.2, 8.3.1–8.3.4 (recepción)
- 70: 160 HH · responsable SRE · ejecución RED · 8.3.1, 2.4.2

| ID | Task | Type | Duration | Start | Finish | Predecessors | Días hábiles T-15 |
| --- | --- | --- | --- | --- | --- | --- | --- |
| 71 | 8.4.6 Gabinete de borde de Concepción montado |  | 14d | 2027-05-03 | 2027-05-20 | 34FS+24d, 35FS+36d | 14 |
| 72 | H2 · Firma del acta | milestone | 0d | 2027-05-10 | 2027-05-10 | 55FS-1d | 0 |
| 73 | 8.2.3 Licencias de software de terceros constituidas a nombre del CLIENTE |  | 7d | 2027-05-11 | 2027-05-19 | 72FS+1d | 7 |
| 74 | 3.1.4 · Habilitación de la cadena para QA | milestone | 0d | 2027-05-12 | 2027-05-12 | 59SS+7d, 72FS+2d | 0 |
| 75 | 8.4.4 Rack R01 de servidores montado y traslado del servidor ERP |  | 35d | 2027-05-24 | 2027-07-13 | 69 | 34 |
| 76 | 8.4.5 Rack R02 de comunicaciones montado |  | 13d | 2027-05-24 | 2027-06-09 | 69 | 13 |
| 77 | 3.1.4 · Cierre del paquete | milestone | 0d | 2027-05-31 | 2027-05-31 | 59FS-1d, 74SS+12d | 0 |
| 78 | 3.1.1 Ambientes de Desarrollo y QA en la nube (H3) |  | 14d | 2027-06-01 | 2027-06-18 | 60, 61, 63, 64, 77SS+1d | 14 |
| 79 | 3.1.2 Ambientes de Preproducción y Producción en la nube (H3) |  | 14d | 2027-06-01 | 2027-06-18 | 60, 61, 63, 64 | 14 |
| 80 | 3.1.3 Ambiente de recuperación ante desastres en la región secundaria (H3) |  | 14d | 2027-06-01 | 2027-06-18 | 60, 61, 63, 64 | 14 |
| 81 | 3.1.5 Observabilidad de los doce módulos y de los sitios, con tableros para el CLIENTE (H3) |  | 14d | 2027-06-01 | 2027-06-18 | 78SS | 14 |
| 82 | 3.2.6 Servicio de gestión de dispositivos móviles |  | 19d | 2027-06-01 | 2027-06-29 | 31FS+57d | 19 |
| 83 | 3.3.1 Identidad y control de acceso (incluidos conductores externos) |  | 46d | 2027-06-01 | 2027-08-06 | 26FS+44d | 45 |
| 84 | 3.3.2 Registro auditable de stock, lotes y cobros |  | 44d | 2027-06-01 | 2027-08-04 | 25FS+44d, 72FS+15d | 43 |
| 85 | 5.1.1 Integración con el ERP como único emisor de la guía de despacho (INT-06 e INT-07) |  | 21d | 2027-06-01 | 2027-07-01 | 9FS+77d | 21 |
| 86 | 5.1.2 Mecanismo de convivencia con el WMS de 2013 |  | 25d | 2027-06-01 | 2027-07-07 | 9FS+77d, 72FS+15d | 25 |
| 87 | 7.2.3 Innovación 2: captura de evidencia en las aplicaciones de preventa, preparación y reparto (INN-02.P3) |  | 91d | 2027-06-01 | 2027-10-12 | 45SS+42d, 93SF+85d | 90 |
| 88 | 8.1.3 Actas de recepción técnica de equipamiento de terreno e infraestructura |  | 7d | 2027-06-01 | 2027-06-09 | 30FS+57d, 35FS+56d | 7 |
| 89 | 8.5.1 Hardware de control de acceso biométrico y esclusa instalado |  | 14d | 2027-06-01 | 2027-06-18 | 69FS+6d | 14 |
| 90 | 3.3.3 Operación sin conexión: 14 horas en terreno y 24 horas en el CD |  | 40d | 2027-06-07 | 2027-08-04 | 72FS+19d, 83SS+4d | 39 |
| 91 | 7.3.2 Innovación 3: asociación lote–sensor en el borde y en el camión (INN-03.P2) |  | 73d | 2027-06-07 | 2027-09-21 | 46SS+46d, 94SF+71d | 72 |
| 92 | 8.5.2 Hardware de videovigilancia instalado |  | 13d | 2027-06-07 | 2027-06-24 | 69FS+10d | 13 |
| 93 | 7.2.2 · Fin de referencia para la precedencia | milestone | 0d | 2027-06-09 | 2027-06-09 | 45FS-1d | 0 |
| 94 | 7.3.1 · Fin de referencia para la precedencia | milestone | 0d | 2027-06-09 | 2027-06-09 | 46FS-1d | 0 |
| 95 | 8.4.4 · Rack R01 montado | milestone | 0d | 2027-06-09 | 2027-06-09 | 75SS+12d | 0 |
| 96 | 4.1.1 Recepción de mercadería con captura de lote y vencimiento (M1 Recepción) |  | 39d | 2027-06-10 | 2027-08-06 | 43FS+28d, 72FS+22d, 77SF+47d, 78FF+32d, 79FF+32d, 80FF+32d, 81FF+32d, 83SS+7d, 84SS+7d, 85SS+7d, 86SS+7d, 90SS+3d, 99SS | 38 |
| 97 | 4.1.2 Inventario por ubicación y lote, con FEFO y conteo cíclico (M2 Inventario) |  | 34d | 2027-06-10 | 2027-07-30 | 43FS+28d, 72FS+22d, 77SF+42d, 78FF+27d, 79FF+27d, 80FF+27d, 81FF+27d, 83SS+7d, 84SS+7d, 85SS+7d, 86SS+7d, 90SS+3d, 99SS | 33 |
| 98 | 4.3.1 Aplicación móvil de preventa sin conexión, con stock y crédito (M3 Preventa) |  | 38d | 2027-06-10 | 2027-08-05 | 43FS+28d, 72FS+22d, 77SF+46d, 78FF+31d, 79FF+31d, 80FF+31d, 81FF+31d, 83SS+7d, 84SS+7d, 85SS+7d, 86SS+7d, 90SS+3d, 97SS, 99SS | 37 |
| 99 | 5.1.3 Integración con la telemetría de los 42 camiones propios (INT-15) |  | 22d | 2027-06-10 | 2027-07-13 | 9FS+84d, 62FS+7d | 21 |
| 100 | 8.7.1 Software de base instalado en los cinco sitios |  | 13d | 2027-06-10 | 2027-06-30 | 71FS+13d, 76, 95FS+1d | 13 |
| 101 | 8.7.2 Enlaces de fibra, LTE y Starlink habilitados, con conmutación al respaldo |  | 13d | 2027-06-10 | 2027-06-30 | 71FS+13d, 76, 95FS+1d | 13 |
| 102 | 8.7.3 Borde de los CD en servicio, con la prueba de autonomía de 24 horas aprobada |  | 7d | 2027-06-10 | 2027-06-18 | 71FS+13d, 76, 95FS+1d | 7 |
| 103 | 4.1.2 → 4.1.3 · Contrato de interfaz disponible | milestone | 0d | 2027-06-16 | 2027-06-16 | 97SS+4d | 0 |
| 104 | 4.1.2 → 4.2.1 · Contrato de interfaz disponible | milestone | 0d | 2027-06-16 | 2027-06-16 | 97SS+4d | 0 |
| 105 | 4.3.1 → 4.3.2 · Contrato de interfaz disponible | milestone | 0d | 2027-06-16 | 2027-06-16 | 98SS+4d | 0 |
| 106 | 4.3.1 → 4.3.3 · Contrato de interfaz disponible | milestone | 0d | 2027-06-16 | 2027-06-16 | 98SS+4d | 0 |
| 107 | 4.1.3 Preparación de pedidos en el turno de noche y en la cámara de congelado (M5 Preparación) |  | 33d | 2027-06-18 | 2027-08-06 | 43FS+34d, 72FS+28d, 77SF+47d, 78FF+32d, 79FF+32d, 80FF+32d, 81FF+32d, 83SS+13d, 84SS+13d, 85SS+13d, 86SS+13d, 90SS+9d, 97SS+6d, 99SS+6d | 32 |
| 108 | 4.2.1 Cadena de frío, retención por SSCC y retiro sanitario (M9 Calidad y trazabilidad) |  | 46d | 2027-06-18 | 2027-08-25 | 43FS+34d, 44FS+33d, 58FS+14d, 72FS+28d, 77SF+60d, 78FF+45d, 79FF+45d, 80FF+45d, 81FF+45d, 83SS+13d, 84SS+13d, 85SS+13d, 86SS+13d, 90SS+9d, 97SS+6d, 99SS+6d | 45 |
| 109 | 4.2.2 Ingesta de temperatura (M9) y posición de flota (M12) |  | 40d | 2027-06-18 | 2027-08-17 | 43FS+34d, 44FS+33d, 58FS+14d, 62FS+13d, 72FS+28d, 77SF+54d, 78FF+39d, 79FF+39d, 80FF+39d, 81FF+39d, 83SS+13d, 84SS+13d, 85SS+13d, 86SS+13d, 90SS+9d, 97SS+6d, 99SS+6d | 39 |
| 110 | 4.1.1 → 4.1.3 · Contrato de interfaz disponible | milestone | 0d | 2027-06-18 | 2027-06-18 | 96SS+6d | 0 |
| 111 | 4.1.1 → 4.2.1 · Contrato de interfaz disponible | milestone | 0d | 2027-06-18 | 2027-06-18 | 96SS+6d | 0 |
| 112 | 8.5.3 Recinto de custodia de respaldos habilitado |  | 13d | 2027-06-22 | 2027-07-09 | 89 | 13 |
| 113 | H3 · Entrega de expediente | milestone | 0d | 2027-06-22 | 2027-06-22 | 78, 79, 80, 81, 102 | 0 |
| 114 | H3 · Revisión de la Contraparte (10 días hábiles) |  | 10d | 2027-06-23 | 2027-07-07 | 113FS+1d | 10 |
| 115 | 4.1.3 → 4.3.2 · Contrato de interfaz disponible | milestone | 0d | 2027-06-25 | 2027-06-25 | 107SS+4d | 0 |
| 116 | 4.1.3 → 4.3.3 · Contrato de interfaz disponible | milestone | 0d | 2027-06-25 | 2027-06-25 | 107SS+4d | 0 |
| 117 | 4.1.3 · Construcción dependiente de 4.1.1 | milestone | 0d | 2027-06-29 | 2027-06-29 | 110FS+5d | 0 |
| 118 | 4.2.1 · Construcción dependiente de 4.1.1 | milestone | 0d | 2027-06-29 | 2027-06-29 | 111FS+5d | 0 |
| 119 | 4.1.3 · Construcción dependiente de 4.1.2 | milestone | 0d | 2027-06-29 | 2027-06-29 | 103FS+7d | 0 |
| 120 | 4.2.1 · Construcción dependiente de 4.1.2 | milestone | 0d | 2027-06-29 | 2027-06-29 | 104FS+7d | 0 |
| 121 | 5.2.2 Integración con la pasarela de pago para el cobro con tarjeta (INT-09) |  | 23d | 2027-07-01 | 2027-08-03 | 9FS+97d | 22 |
| 122 | 8.4.2 Certificación de enlaces, etiquetado y planos as-built |  | 14d | 2027-07-01 | 2027-07-21 | 70FS+26d | 13 |
| 123 | H3 · Firma del acta | milestone | 0d | 2027-07-07 | 2027-07-07 | 114FS-1d | 0 |
| 124 | 8.4.4 · Traslado dominical del ERP a R01 | milestone | 0d | 2027-07-11 | 2027-07-11 | 95FS+21d, 123FS+3d | 0 |
| 125 | 8.4.4 · Cierre del paquete | milestone | 0d | 2027-07-12 | 2027-07-12 | 75FS-1d, 124SS+1d | 0 |
| 126 | 5.2.4 Integración con el servicio de avisos al cliente (INT-11) |  | 20d | 2027-07-20 | 2027-08-16 | 9FS+110d | 20 |
| 127 | 4.1.2 · Cierre del paquete | milestone | 0d | 2027-07-29 | 2027-07-29 | 97FS-1d, 128SS, 129SS | 0 |
| 128 | 4.1.2 → 4.1.3 · Incremento para integración | milestone | 0d | 2027-07-29 | 2027-07-29 | 103FS+29d | 0 |
| 129 | 4.1.2 → 4.2.1 · Incremento para integración | milestone | 0d | 2027-07-29 | 2027-07-29 | 104FS+29d | 0 |
| 130 | 4.3.4 Devoluciones en terreno y control de envases (M8 Devoluciones y envases) |  | 34d | 2027-07-30 | 2027-09-15 | 43FS+62d, 72FS+56d, 77SF+76d, 78FF+61d, 79FF+61d, 80FF+61d, 81FF+61d, 83SS+41d, 84SS+41d, 85SS+41d, 86SS+41d, 90SS+37d, 99SS+34d, 127SS+1d | 34 |
| 131 | 5.2.1 Intercambio de lote y trazabilidad con los proveedores |  | 23d | 2027-08-02 | 2027-09-01 | 3FS+119d | 23 |
| 132 | 6.8.7 Contrato de custodia de fuentes con un tercero independiente |  | 7d | 2027-08-02 | 2027-08-10 | 77SS+43d | 7 |
| 133 | 7.1.1 Innovación 1: documento de catálogo de acciones y protocolo del piloto (INN-01.P1) |  | 49d | 2027-08-02 | 2027-10-08 | 72FS+57d | 49 |
| 134 | 8.4.3 Gabinetes de piso y switches de acceso instalados en las bodegas de Talca y Concepción |  | 14d | 2027-08-02 | 2027-08-19 | 34FS+86d, 122FS+8d | 14 |
| 135 | 4.1.1 → 4.1.3 · Incremento para integración | milestone | 0d | 2027-08-02 | 2027-08-02 | 110FS+29d | 0 |
| 136 | 4.1.3 · Integración con 4.1.1 | milestone | 0d | 2027-08-03 | 2027-08-03 | 117SS+25d, 135FS+1d | 0 |
| 137 | 4.1.3 · Integración con 4.1.2 | milestone | 0d | 2027-08-03 | 2027-08-03 | 119SS+25d, 128FS+3d | 0 |
| 138 | 5.4.1 Informe de perfilamiento y datos saneados |  | 42d | 2027-08-04 | 2027-10-01 | 25FS+88d, 85FS+23d | 42 |
| 139 | 4.3.1 · Cierre del paquete | milestone | 0d | 2027-08-04 | 2027-08-04 | 98FS-1d, 140SS, 141SS | 0 |
| 140 | 4.3.1 → 4.3.2 · Incremento para integración | milestone | 0d | 2027-08-04 | 2027-08-04 | 105FS+33d | 0 |

Notes:
- 71: 160 HH · responsable SRE · ejecución RED · 2.4.3, 8.1.2
- 73: 80 HH · responsable ARQ · ejecución ARQ · 2.8.1
- 75: 160 HH · responsable SRE · ejecución RED · 8.3.5 (D-11); montaje al 09-06; traslado dominical tras acta H3 y verificación posterior (D-12)
- 76: 160 HH · responsable SRE · ejecución RED · 8.3.5 (D-11)
- 77: 240 HH · responsable SRE · ejecución SRE · 3.2.1 CC; habilitación para QA tras el acta H2
- 78: 240 HH · responsable SRE · ejecución SRE · 3.2.1, 3.2.2, 3.2.4, 3.2.5 (D-08)
- 79: 240 HH · responsable SRE · ejecución SRE · 3.2.1, 3.2.2, 3.2.4, 3.2.5 (D-08)
- 80: 240 HH · responsable SRE · ejecución SRE · 3.2.1, 3.2.2, 3.2.4, 3.2.5 (D-08)
- 81: 240 HH · responsable SRE · ejecución SRE · 3.1.1 CC
- 82: 240 HH · responsable SRE · ejecución SRE · 8.2.1 (D-07)
- 83: 480 HH · responsable SEG · ejecución SEG · 2.3.1 (D-06)
- 84: 480 HH · responsable ARQ · ejecución ARQ · 2.2.3, 2.8.1
- 85: 516 HH · responsable ARQ · ejecución ARQ · 2.1.5 (D-02)
- 86: 480 HH · responsable ARQ · ejecución ARQ · 2.1.5, 2.8.1
- 87: 240 HH · responsable CAL · ejecución CAL · 7.2.2 (circuito mínimo)
- 88: 80 HH · responsable SRE · ejecución SRE · 8.1.1, 8.1.2
- 89: 160 HH · responsable SEG · ejecución SEG · 8.3.5
- 90: 480 HH · responsable ARQ · ejecución ARQ · 2.8.1, 3.3.1 CC
- 91: 240 HH · responsable DAT · ejecución DAT · 7.3.1 (parámetros aprobados)
- 92: 160 HH · responsable SEG · ejecución SEG · 8.3.5
- 93: 240 HH · responsable CAL · ejecución CAL · 7.2.1 (contrato de evidencia)
- 94: 240 HH · responsable DAT · ejecución DAT · 2.1.1, 2.2.3 CC
- 96: 880.33 HH · responsable DES · ejecución DES · 2.8.1, 2.6.2, 3.1 (QA), 3.3.1–3.3.3 (CC), 5.1 (CC)
- 97: 1006.67 HH · responsable DES · ejecución DES · 2.8.1, 2.6.2, 3.1 (QA), 3.3.1–3.3.3 (CC), 5.1 (CC)
- 98: 1314.17 HH · responsable DES · ejecución DES · 2.8.1, 2.6.2, 3.1 (QA), 3.3.1–3.3.3 (CC), 5.1 (CC), 4.1.2 (CC)
- 99: 480 HH · responsable ARQ · ejecución ARQ · 2.1.5, 3.2.3
- 100: 160 HH · responsable SRE · ejecución SRE · Montaje 8.4.4, 8.4.5 y 8.4.6 (D-12)
- 101: 160 HH · responsable SRE · ejecución RED · Montaje 8.4.4, 8.4.5 y 8.4.6 (D-12)
- 102: 160 HH · responsable SRE · ejecución RED · Montaje 8.4.4, 8.4.5 y 8.4.6 (D-12)
- 107: 973.83 HH · responsable DES · ejecución DES · 2.8.1, 2.6.2, 3.1 (QA), 3.3.1–3.3.3 (CC), 5.1 (CC), 4.1.1/4.1.2 (interfaz), 4.1.2 CC
- 108: 1587.33 HH · responsable DES · ejecución DES · 2.8.1, 2.6.2, 3.1 (QA), 3.3.1–3.3.3 (CC), 5.1 (CC), 4.1.1/4.1.2 (interfaz), 2.7.1, 2.7.2, 4.1.2 CC
- 109: 919.5 HH · responsable DES · ejecución DES · 2.8.1, 2.6.2, 3.1 (QA), 3.2.3, 3.3.1–3.3.3 (CC), 5.1 (CC), 2.7.1, 2.7.2, 4.1.2 CC
- 112: 160 HH · responsable SEG · ejecución SEG · 8.5.1
- 121: 480 HH · responsable DES · ejecución DES · 2.1.5
- 122: 160 HH · responsable SRE · ejecución RED · 8.4.1
- 124: Ventana especial sin cambios de software; respaldo completo verificado.
- 125: 160 HH · responsable SRE · ejecución RED · 8.3.5 (D-11); montaje al 09-06; traslado dominical tras acta H3 y verificación posterior (D-12)
- 126: 480 HH · responsable DES · ejecución DES · 2.1.5
- 127: 1006.67 HH · responsable DES · ejecución DES · 2.8.1, 2.6.2, 3.1 (QA), 3.3.1–3.3.3 (CC), 5.1 (CC)
- 130: 588 HH · responsable DES · ejecución DES · 2.8.1, 2.6.2, 3.1 (QA), 3.3.1–3.3.3 (CC), 5.1 (CC), 4.1.2
- 131: 480 HH · responsable DAT · ejecución DAT · 1.1.3
- 132: 80 HH · responsable JP · ejecución JP · 3.1.4
- 133: 240 HH · responsable DAT · ejecución DAT · 2.8.1
- 134: 160 HH · responsable SRE · ejecución RED · 8.4.2, 2.4.3
- 138: 512 HH · responsable DAT · ejecución DAT · 2.2.3, 5.1.1
- 139: 1314.17 HH · responsable DES · ejecución DES · 2.8.1, 2.6.2, 3.1 (QA), 3.3.1–3.3.3 (CC), 5.1 (CC), 4.1.2 (CC)

| ID | Task | Type | Duration | Start | Finish | Predecessors | Días hábiles T-15 |
| --- | --- | --- | --- | --- | --- | --- | --- |
| 141 | 4.3.1 → 4.3.3 · Incremento para integración | milestone | 0d | 2027-08-04 | 2027-08-04 | 106FS+33d | 0 |
| 142 | 4.3.3 Aplicación móvil de reparto con prueba de entrega digital (M6 Reparto) |  | 37d | 2027-08-05 | 2027-09-27 | 43FS+66d, 72FS+60d, 77SF+83d, 78FF+68d, 79FF+68d, 80FF+68d, 81FF+68d, 83SS+45d, 84SS+45d, 85SS+45d, 86SS+45d, 90SS+41d, 99SS+38d, 139SS+1d | 37 |
| 143 | 4.1.1 · Cierre del paquete | milestone | 0d | 2027-08-05 | 2027-08-05 | 96FS-1d, 135SS+3d, 145SS | 0 |
| 144 | 4.1.3 · Cierre del paquete | milestone | 0d | 2027-08-05 | 2027-08-05 | 107FS-1d, 136SS+2d, 137SS+2d, 146SS, 147SS | 0 |
| 145 | 4.1.1 → 4.2.1 · Incremento para integración | milestone | 0d | 2027-08-05 | 2027-08-05 | 111FS+32d | 0 |
| 146 | 4.1.3 → 4.3.2 · Incremento para integración | milestone | 0d | 2027-08-05 | 2027-08-05 | 115FS+28d | 0 |
| 147 | 4.1.3 → 4.3.3 · Incremento para integración | milestone | 0d | 2027-08-05 | 2027-08-05 | 116FS+28d | 0 |
| 148 | 4.3.2 Planificación de rutas corregible por el planificador (M4 Rutas) |  | 31d | 2027-08-06 | 2027-09-20 | 13FS+66d, 43FS+67d, 72FS+61d, 77SF+78d, 78FF+63d, 79FF+63d, 80FF+63d, 81FF+63d, 83SS+46d, 84SS+46d, 85SS+46d, 86SS+46d, 90SS+42d, 99SS+39d, 143SS+1d | 31 |
| 149 | 4.3.3 → 4.3.5 · Contrato de interfaz disponible | milestone | 0d | 2027-08-10 | 2027-08-10 | 142SS+3d | 0 |
| 150 | 4.3.5 Cobro en ruta, rendición y conciliación (M7 Cobranza y rendición) |  | 36d | 2027-08-11 | 2027-09-30 | 43FS+70d, 72FS+64d, 77SF+86d, 78FF+71d, 79FF+71d, 80FF+71d, 81FF+71d, 83SS+49d, 84SS+49d, 85SS+49d, 86SS+49d, 90SS+45d, 99SS+42d, 142SS+4d | 36 |
| 151 | 4.3.3 · Construcción dependiente de 4.1.3 | milestone | 0d | 2027-08-11 | 2027-08-11 | 116FS+32d | 0 |
| 152 | 4.3.3 · Construcción dependiente de 4.3.1 | milestone | 0d | 2027-08-11 | 2027-08-11 | 106FS+38d | 0 |
| 153 | 4.3.2 · Construcción dependiente de 4.1.3 | milestone | 0d | 2027-08-13 | 2027-08-13 | 115FS+34d | 0 |
| 154 | 4.3.2 · Construcción dependiente de 4.3.1 | milestone | 0d | 2027-08-13 | 2027-08-13 | 105FS+40d | 0 |
| 155 | 5.2.3 Integración con el servicio de mapas y geocodificación (INT-10) |  | 20d | 2027-08-16 | 2027-09-10 | 9FS+129d | 20 |
| 156 | 4.3.5 · Construcción dependiente de 4.3.3 | milestone | 0d | 2027-08-18 | 2027-08-18 | 149FS+6d | 0 |
| 157 | 4.2.1 · Integración con 4.1.1 | milestone | 0d | 2027-08-20 | 2027-08-20 | 118SS+38d, 145FS+11d | 0 |
| 158 | 4.2.1 · Integración con 4.1.2 | milestone | 0d | 2027-08-20 | 2027-08-20 | 120SS+38d, 129FS+16d | 0 |
| 159 | 4.2.1 · Cierre del paquete | milestone | 0d | 2027-08-24 | 2027-08-24 | 108FS-1d, 157SS+2d, 158SS+2d | 0 |
| 160 | 4.5.1 Indicadores operacionales y OTIF diario (M10 Analítica) |  | 25d | 2027-08-25 | 2027-09-29 | 43FS+80d, 72FS+74d, 77SF+85d, 78FF+70d, 79FF+70d, 80FF+70d, 81FF+70d, 83SS+59d, 84SS+59d, 85SS+59d, 86SS+59d, 90SS+55d, 99SS+52d, 159SS+1d | 25 |
| 161 | 3.3.4 Parametrización y motor de reglas versionados |  | 21d | 2027-09-01 | 2027-09-30 | 72FS+79d, 84FS+20d | 21 |
| 162 | 3.3.5 Gestión documental con versionado, búsqueda y vista previa |  | 21d | 2027-09-01 | 2027-09-30 | 72FS+79d, 83FS+18d | 21 |
| 163 | 3.3.6 Generación de documentos con plantillas administrables |  | 21d | 2027-09-01 | 2027-09-30 | 72FS+79d, 162SS | 21 |
| 164 | 8.6.4 Kit de cadena de frío instalado y recibido en los 28 camiones con frío |  | 94d | 2027-09-01 | 2028-01-14 | 12FS+106d, 44FS+84d, 58FS+65d | 94 |
| 165 | 4.3.2 · Integración con 4.1.3 | milestone | 0d | 2027-09-15 | 2027-09-15 | 146FS+29d, 153SS+23d | 0 |
| 166 | 4.3.2 · Integración con 4.3.1 | milestone | 0d | 2027-09-15 | 2027-09-15 | 140FS+30d, 154SS+23d | 0 |
| 167 | 4.3.2 · Cierre del paquete | milestone | 0d | 2027-09-20 | 2027-09-20 | 148FS-1d, 165SS+2d, 166SS+2d | 0 |
| 168 | 4.3.3 · Integración con 4.1.3 | milestone | 0d | 2027-09-24 | 2027-09-24 | 147FS+35d, 151SS+31d | 0 |
| 169 | 4.3.3 · Integración con 4.3.1 | milestone | 0d | 2027-09-24 | 2027-09-24 | 141FS+36d, 152SS+31d | 0 |
| 170 | 4.3.3 · Cierre del paquete | milestone | 0d | 2027-09-27 | 2027-09-27 | 142FS-1d, 168SS+1d, 169SS+1d, 171SS | 0 |
| 171 | 4.3.3 → 4.3.5 · Incremento para integración | milestone | 0d | 2027-09-27 | 2027-09-27 | 149FS+33d | 0 |
| 172 | 4.3.5 · Integración con 4.3.3 | milestone | 0d | 2027-09-28 | 2027-09-28 | 156SS+28d, 171FS+1d | 0 |
| 173 | 4.3.5 · Cierre del paquete | milestone | 0d | 2027-09-30 | 2027-09-30 | 150FS-1d, 172SS+2d | 0 |
| 174 | 8.6.4 · Recepción parcial de cuatro kits | milestone | 0d | 2027-09-30 | 2027-09-30 | 164SS+20d | 0 |
| 175 | 5.3.1 Intercambio electrónico certificado con la cadena principal (INT-08) |  | 171d | 2027-10-01 | 2028-06-02 | 9FS+162d, 79SS+85d, 235FF+23d | 169 |
| 176 | 7.1.2 Innovación 1: estimador de saldo y ritmo de reposición (INN-01.P2) |  | 34d | 2027-10-01 | 2027-11-19 | 133SS+43d, 187SF+29d | 34 |
| 177 | 7.1.3 Innovación 1: función de lista sin conexión en la aplicación de preventa (INN-01.P3) |  | 34d | 2027-10-01 | 2027-11-19 | 133SS+43d, 187SF+29d | 34 |
| 178 | 7.3.3 Innovación 3: vista en M9 y orden de salida sugerido (INN-03.P3) |  | 34d | 2027-10-01 | 2027-11-19 | 91FS+8d | 34 |
| 179 | 8.4.7 Gabinetes de borde de plataformas de cross-docking montados |  | 13d | 2027-10-01 | 2027-10-20 | 71FS+91d | 13 |
| 180 | 9.7.1 Acuerdos operacionales firmados con los diez transportistas |  | 7d | 2027-10-01 | 2027-10-12 | 5FS+162d, 33FS+89d | 7 |
| 181 | 9.7.2 Acta de acuerdo con el sindicato sobre terminales, GPS y cámaras |  | 7d | 2027-10-01 | 2027-10-12 | 33FS+89d | 7 |
| 182 | 5.4.2 Datos maestros cargados: 8.400 SKU, clientes e instalaciones |  | 21d | 2027-10-04 | 2027-11-03 | 138 | 21 |
| 183 | 6.1.1 Pruebas de integración, regresión e idempotencia en QA (H4) |  | 13d | 2027-10-05 | 2027-10-22 | 109FS+34d, 121FS+44d, 126FS+34d, 127SS+47d, 130FS+12d, 131FS+22d, 139SS+43d, 143SS+42d, 144SS+42d, 155FS+15d, 159SS+29d, 160FS+3d, 161FS+2d, 162FS+2d, 163FS+2d, 167SS+11d, 170SS+6d, 173SS+3d | 13 |
| 184 | 8.6.1 Terminales de preventa, reparto y bodega configurados y enrolados |  | 70d | 2027-10-06 | 2028-01-14 | 82FS+69d | 70 |
| 185 | 8.6.3 Sensores de cámara y gateways IoT instalados en Talca y Concepción |  | 35d | 2027-10-06 | 2027-11-25 | 88FS+81d, 134FS+32d | 35 |
| 186 | 8.6.6 Impresoras de andén y balanzas de recepción instaladas |  | 70d | 2027-10-06 | 2028-01-14 | 88FS+81d, 134FS+32d | 70 |
| 187 | 7.1.1 · Fin de referencia para la precedencia | milestone | 0d | 2027-10-08 | 2027-10-08 | 133FS-1d | 0 |
| 188 | H4 · Entrega de expediente | milestone | 0d | 2027-10-20 | 2027-10-20 | 189SS | 0 |
| 189 | H4 · Evidencia disponible (6.1.1) | milestone | 0d | 2027-10-20 | 2027-10-20 | 121FS+54d, 126FS+44d, 131FS+32d, 155FS+25d, 161FS+12d, 162FS+12d, 163FS+12d, 183SS+10d | 0 |
| 190 | H4 · Revisión de la Contraparte (10 días hábiles) |  | 10d | 2027-10-21 | 2027-11-04 | 188FS+1d | 10 |
| 191 | 6.1.1 · Cierre del paquete | milestone | 0d | 2027-10-22 | 2027-10-22 | 183FS-1d, 189SS+2d | 0 |
| 192 | 6.2.1 Pruebas de aceptación y de accesibilidad con preventistas, conductores y bodega |  | 19d | 2027-10-25 | 2027-11-19 | 191SS+1d | 19 |
| 193 | 6.2.2 Pruebas de operación en condiciones físicas extremas y sin conexión |  | 19d | 2027-10-25 | 2027-11-19 | 191SS+1d | 19 |
| 194 | 6.3.1 Pruebas de carga con el peak de septiembre y de resiliencia |  | 13d | 2027-10-25 | 2027-11-11 | 191SS+1d | 13 |
| 195 | 6.4.1 Prueba de recuperación ante desastres con conmutación real |  | 13d | 2027-10-25 | 2027-11-11 | 191SS+1d | 13 |
| 196 | 6.5.1 Prueba de seguridad ofensiva de la Etapa 1, por un tercero independiente |  | 13d | 2027-10-25 | 2027-11-11 | 191SS+1d | 13 |
| 197 | 6.6.1 Demostración en Preproducción del despliegue sin interrupción de la Etapa 1 |  | 13d | 2027-10-25 | 2027-11-11 | 191SS+1d | 13 |
| 198 | 9.1.1 Plan de olas de la Etapa 1 por sitio y zona |  | 7d | 2027-11-02 | 2027-11-10 | 191SS+6d | 7 |
| 199 | 9.5.1 Plan de capacitación por perfil |  | 38d | 2027-11-02 | 2027-12-24 | 57FS+105d, 198SS | 38 |
| 200 | 9.5.6 Plataforma de autoformación en línea con registro de avance |  | 38d | 2027-11-02 | 2027-12-24 | 199SS | 38 |
| 201 | 8.6.2 Terminales de pago configurados, uno por camión |  | 51d | 2027-11-04 | 2028-01-14 | 88FS+100d, 121FS+64d | 51 |
| 202 | 8.6.5 Impresoras de cabina instaladas |  | 51d | 2027-11-04 | 2028-01-14 | 88FS+100d | 51 |
| 203 | H4 · Firma del acta | milestone | 0d | 2027-11-04 | 2027-11-04 | 190FS-1d | 0 |
| 204 | 2.7.3 Informe de piloto de cadena de frío en cuatro camiones |  | 29d | 2027-11-09 | 2027-12-20 | 32FS+164d, 44FS+130d, 58FS+111d, 109FS+57d, 159SS+52d, 174FS+26d, 191SS+11d, 203FS+3d | 29 |
| 205 | 6.7.1 Acta de certificación de la Etapa 1 (H5) |  | 8d | 2027-11-22 | 2027-12-01 | 192, 193, 194FS+6d, 195FS+6d, 196FS+6d, 197FS+6d | 8 |
| 206 | H5 · Entrega de expediente | milestone | 0d | 2027-11-24 | 2027-11-24 | 207SS | 0 |
| 207 | H5 · Evidencia disponible (6.7.1) | milestone | 0d | 2027-11-24 | 2027-11-24 | 192FS+2d, 193FS+2d, 194FS+8d, 195FS+8d, 196FS+8d, 197FS+8d, 205SS+2d | 0 |
| 208 | H5 · Revisión de la Contraparte (10 días hábiles) |  | 10d | 2027-11-25 | 2027-12-09 | 206FS+1d | 10 |
| 209 | 5.4.3 Saldos migrados desde el WMS de Talca |  | 22d | 2027-12-01 | 2027-12-31 | 182FS+19d | 22 |
| 210 | 5.4.4 Saldos cargados en Concepción desde el conteo físico |  | 22d | 2027-12-01 | 2027-12-31 | 182FS+19d | 22 |

Notes:
- 142: 1586.67 HH · responsable DES · ejecución DES · 2.8.1, 2.6.2, 3.1 (QA), 3.3.1–3.3.3 (CC), 5.1 (CC), 4.1.3/4.3.1 (interfaz), 4.3.1
- 143: 880.33 HH · responsable DES · ejecución DES · 2.8.1, 2.6.2, 3.1 (QA), 3.3.1–3.3.3 (CC), 5.1 (CC)
- 144: 973.83 HH · responsable DES · ejecución DES · 2.8.1, 2.6.2, 3.1 (QA), 3.3.1–3.3.3 (CC), 5.1 (CC), 4.1.1/4.1.2 (interfaz), 4.1.2 CC
- 148: 937.67 HH · responsable DES · ejecución DES · 2.1.4, 2.8.1, 2.6.2, 3.1 (QA), 3.3.1–3.3.3 (CC), 5.1 (CC), 4.1.3/4.3.1 (interfaz), 4.1.1
- 150: 1248.33 HH · responsable DES · ejecución DES · 2.8.1, 2.6.2, 3.1 (QA), 3.3.1–3.3.3 (CC), 5.1 (CC), 4.3.3 (interfaz), 4.3.3 CC
- 155: 480 HH · responsable DES · ejecución DES · 2.1.5
- 159: 1587.33 HH · responsable DES · ejecución DES · 2.8.1, 2.6.2, 3.1 (QA), 3.3.1–3.3.3 (CC), 5.1 (CC), 4.1.1/4.1.2 (interfaz), 2.7.1, 2.7.2, 4.1.2 CC
- 160: 836.5 HH · responsable DAT · ejecución DAT · 2.8.1, 2.6.2, 3.1 (QA), 3.3.1–3.3.3 (CC), 5.1 (CC), 4.2.1
- 161: 480 HH · responsable DES · ejecución DES · 2.8.1, 3.3.2
- 162: 480 HH · responsable DES · ejecución DES · 2.8.1, 3.3.1
- 163: 480 HH · responsable DES · ejecución DES · 2.8.1, 3.3.5 CC
- 164: 320 HH · responsable SRE · ejecución SRE · 8.1.4, 2.7.1, 2.7.2; cuatro kits al 30-09-2027 para 2.7.3
- 167: 937.67 HH · responsable DES · ejecución DES · 2.1.4, 2.8.1, 2.6.2, 3.1 (QA), 3.3.1–3.3.3 (CC), 5.1 (CC), 4.1.3/4.3.1 (interfaz), 4.1.1
- 170: 1586.67 HH · responsable DES · ejecución DES · 2.8.1, 2.6.2, 3.1 (QA), 3.3.1–3.3.3 (CC), 5.1 (CC), 4.1.3/4.3.1 (interfaz), 4.3.1
- 173: 1248.33 HH · responsable DES · ejecución DES · 2.8.1, 2.6.2, 3.1 (QA), 3.3.1–3.3.3 (CC), 5.1 (CC), 4.3.3 (interfaz), 4.3.3 CC
- 175: 516 HH · responsable DES · ejecución DES · 2.1.5 (perfil de intercambio), 3.1.2 CC, 4.4.1 (QA)
- 176: 240 HH · responsable DAT · ejecución DAT · 7.1.1 (protocolo inicial)
- 177: 240 HH · responsable DAT · ejecución DAT · 7.1.1 (protocolo inicial)
- 178: 240 HH · responsable DAT · ejecución DAT · 7.3.2
- 179: 160 HH · responsable SRE · ejecución RED · 8.4.6
- 180: 80 HH · responsable IMP · ejecución IMP · 1.3.2, 9.6.3
- 181: 80 HH · responsable IMP · ejecución IMP · 9.6.3
- 182: 504 HH · responsable DAT · ejecución DAT · 5.4.1
- 183: 160 HH · responsable CAL · ejecución CAL · 3.3.4–3.3.6, 4.1.1–4.1.3, 4.2.1–4.2.2, 4.3.1–4.3.5, 4.5.1, 5.2.1–5.2.4 (D-20)
- 184: 160 HH · responsable SRE · ejecución SRE · 3.2.6
- 185: 160 HH · responsable SRE · ejecución SRE · 8.1.3, 8.4.3
- 186: 160 HH · responsable SRE · ejecución SRE · 8.1.3, 8.4.3
- 187: 240 HH · responsable DAT · ejecución DAT · 2.8.1
- 189: Versiones integradas en QA, informes y pruebas
- 191: 160 HH · responsable CAL · ejecución CAL · 3.3.4–3.3.6, 4.1.1–4.1.3, 4.2.1–4.2.2, 4.3.1–4.3.5, 4.5.1, 5.2.1–5.2.4 (D-20)
- 192: 320 HH · responsable CAL · ejecución CAL · 6.1.1
- 193: 320 HH · responsable CAL · ejecución CAL · 6.1.1
- 194: 320 HH · responsable CAL · ejecución CAL · 6.1.1
- 195: 320 HH · responsable CAL · ejecución CAL · 6.1.1
- 196: 320 HH · responsable SEG · ejecución SEG · 6.1.1
- 197: 320 HH · responsable SRE · ejecución SRE · 6.1.1
- 198: 80 HH · responsable IMP · ejecución IMP · 6.1.1 (D-48)
- 199: 160 HH · responsable IMP · ejecución IMP · 2.6.3, 9.1.1 CC
- 200: 160 HH · responsable IMP · ejecución IMP · 9.5.1 CC
- 201: 160 HH · responsable SRE · ejecución SRE · 8.1.3, 5.2.2
- 202: 160 HH · responsable SRE · ejecución SRE · 8.1.3
- 204: 341.33 HH · responsable IMP · ejecución IMP · 2.7.1, 2.7.2, 4.2.1, 4.2.2, 6.1.1 y H4, 8.2.7; cuatro actas parciales 8.6.4
- 205: 160 HH · responsable CAL · ejecución CAL · 6.2.1, 6.2.2, 6.3.1, 6.4.1, 6.5.1, 6.6.1
- 207: Pruebas aprobadas de las cuentas 6.2 a 6.6; cierre documental posterior
- 209: 504 HH · responsable DAT · ejecución DAT · 5.4.2
- 210: 504 HH · responsable DAT · ejecución DAT · 5.4.2

| ID | Task | Type | Duration | Start | Finish | Predecessors | Días hábiles T-15 |
| --- | --- | --- | --- | --- | --- | --- | --- |
| 211 | 7.1.4 Innovación 1: informe del piloto en marcha blanca y habilitación (INN-01.P4) |  | 107d | 2027-12-01 | 2028-05-02 | 176FS+7d, 177FS+7d | 106 |
| 212 | 7.2.4 Innovación 2: informe de validación comparada (INN-02.P4, parte 1) |  | 107d | 2027-12-01 | 2028-05-02 | 87FS+35d | 106 |
| 213 | 7.3.4 Innovación 3: informe de validación en marcha blanca con Calidad (INN-03.P4) |  | 107d | 2027-12-01 | 2028-05-02 | 178FS+7d | 106 |
| 214 | 9.1.2 Procedimiento y ensayo de reversión de la Etapa 1 |  | 7d | 2027-12-01 | 2027-12-10 | 182FS+19d, 192FS+7d, 198FS+14d | 7 |
| 215 | 6.7.1 · Cierre del paquete | milestone | 0d | 2027-12-01 | 2027-12-01 | 205FS-1d, 207SS+5d | 0 |
| 216 | 5.4.5 Acta de conciliación y corte fuera de las ventanas de congelamiento |  | 19d | 2028-01-03 | 2028-01-27 | 138FS+62d, 182FS+41d, 209, 210 | 19 |
| 217 | H5 · Firma del acta | milestone | 0d | 2028-01-03 | 2028-01-03 | 208FS+16d | 0 |
| 218 | 2.1.2 Documento de línea base de alcance de la Etapa 2: canal moderno y costo de servir (H8) |  | 7d | 2028-02-01 | 2028-02-09 | 217FS+21d | 7 |
| 219 | 2.2.4 Documento de diseño detallado de M11 y del intercambio con las cadenas |  | 11d | 2028-02-01 | 2028-02-15 | 218SS | 11 |
| 220 | 7.5.1 Innovación 5: prototipo e informe de la prueba de comprensión (INN-05.P1) |  | 36d | 2028-02-01 | 2028-03-21 | 170SS+88d, 218SS | 36 |
| 221 | 9.5.7 Certificación de preventistas, conductores y preparadores (Etapa 1) |  | 39d | 2028-02-01 | 2028-03-24 | 199FS+26d, 222SS | 39 |
| 222 | 9.2.1 Marcha blanca de la Etapa 1 |  | 65d | 2028-02-01 | 2028-05-03 | 223SS | 63 |
| 223 | H6 · Inicio contractual de marcha blanca | milestone | 0d | 2028-02-01 | 2028-02-01 | 125SS+141d, 198FS+57d, 214FS+36d, 216FS+2d, 217FS+21d, 225SS | 0 |
| 224 | Etapa 2 · Desarrollo (meses 13 a 18) |  | 128d | 2028-02-01 | 2028-08-02 |  | 126 |
| 225 | H6 · Entrega de expediente | milestone | 0d | 2028-02-01 | 2028-02-01 |  | 0 |
| 226 | 2.8.2 Acta de aprobación del diseño detallado de la Etapa 2 (H8) |  | 8d | 2028-02-16 | 2028-02-25 | 218FS+4d, 219 | 8 |
| 227 | H8 · Entrega de expediente | milestone | 0d | 2028-02-24 | 2028-02-24 | 228SS | 0 |
| 228 | H8 · Evidencia disponible (2.8.2) | milestone | 0d | 2028-02-24 | 2028-02-24 | 218FS+10d, 219FS+6d, 226SS+6d | 0 |
| 229 | 2.8.2 · Cierre del paquete | milestone | 0d | 2028-02-25 | 2028-02-25 | 226FS-1d, 228SS+1d | 0 |
| 230 | H8 · Revisión de la Contraparte (10 días hábiles) |  | 10d | 2028-02-25 | 2028-03-09 | 227FS+1d | 10 |
| 231 | E1 · Puerta de la ola de reparto | milestone | 0d | 2028-02-29 | 2028-02-29 | 164FS+31d, 180FS+97d, 181FS+97d, 204FS+50d | 0 |
| 232 | 7.5.2 Innovación 5: evaluación de privacidad y diseño de la impresión en cabina (INN-05.P2) |  | 36d | 2028-03-01 | 2028-04-20 | 220SS+21d, 238SF+22d | 35 |
| 233 | H8 · Firma del acta | milestone | 0d | 2028-03-09 | 2028-03-09 | 230FS-1d | 0 |
| 234 | 4.4.2 Portal web de clientes: cuenta, saldo, entregas y documentos |  | 35d | 2028-03-13 | 2028-05-02 | 218FS+22d, 233FS+2d | 34 |
| 235 | 4.4.1 Canal moderno y portal de proveedores (M11) |  | 33d | 2028-03-15 | 2028-05-02 | 218FS+24d, 233FS+4d | 32 |
| 236 | 4.4.3 Portal web de transportistas: rutas asignadas del día siguiente |  | 33d | 2028-03-15 | 2028-05-02 | 218FS+24d, 233FS+4d | 32 |
| 237 | 4.5.2 Costo de servir por cliente y por entrega (M10 Analítica) |  | 33d | 2028-03-15 | 2028-05-02 | 218FS+24d, 233FS+4d | 32 |
| 238 | 7.5.1 · Fin de referencia para la precedencia | milestone | 0d | 2028-03-21 | 2028-03-21 | 220FS-1d | 0 |
| 239 | 9.5.4 Traspaso al equipo de TI del CLIENTE |  | 126d | 2028-04-01 | 2028-10-04 |  | 123 |
| 240 | 1.6.2 Primera actualización anual del Plan de Reversibilidad |  | 7d | 2028-04-03 | 2028-04-11 | 39FS+249d | 7 |
| 241 | 7.5.3 Innovación 5: cálculo y bloques 1 a 3 de la hoja de negocio (INN-05.P3) |  | 49d | 2028-04-03 | 2028-06-12 | 220SS+45d, 232SS+24d, 238SF+59d, 242SF+38d | 48 |
| 242 | 7.5.2 · Fin de referencia para la precedencia | milestone | 0d | 2028-04-19 | 2028-04-19 | 232FS-1d | 0 |
| 243 | H7 · Cierre de cuatro semanas de evidencia | milestone | 0d | 2028-04-30 | 2028-04-30 | 222FS-1d, 231FS+44d | 0 |
| 244 | 5.3.2 Intercambio electrónico con las demás cadenas (INT-08) |  | 52d | 2028-05-02 | 2028-07-14 | 9FS+311d, 175SS+149d, 235FF+53d | 52 |
| 245 | 6.1.2 Pruebas de integración y regresión sin afectar la Etapa 1 en producción (H9) |  | 13d | 2028-05-02 | 2028-05-18 | 234FS+1d, 235FS+1d, 236FS+1d, 237FS+1d | 13 |
| 246 | 9.4.1 Expediente y acta de aceptación de la Etapa 1 (H7) |  | 12d | 2028-05-02 | 2028-05-17 | 248SS | 12 |
| 247 | 9.6.2 Plan de gestión del cambio con cadenas y transportistas |  | 38d | 2028-05-02 | 2028-06-23 | 175SS+149d, 233FS+38d | 38 |
| 248 | H7 · Entrega de expediente | milestone | 0d | 2028-05-02 | 2028-05-02 | 221FS+26d, 243FS+1d | 0 |
| 249 | H7 · Revisión de la Contraparte (10 días hábiles) |  | 10d | 2028-05-03 | 2028-05-16 | 248FS+1d | 10 |
| 250 | H7 · Firma del acta | milestone | 0d | 2028-05-16 | 2028-05-16 | 249FS-1d | 0 |
| 251 | 9.3.1 Estabilización y soporte puente E1 |  | 94d | 2028-05-17 | 2028-10-02 | 252SS | 93 |
| 252 | H7 · Paso a producción | milestone | 0d | 2028-05-17 | 2028-05-17 | 250FS+1d | 0 |
| 253 | 9.4.1 · Cierre del paquete | milestone | 0d | 2028-05-17 | 2028-05-17 | 246FS-1d, 254SS | 0 |
| 254 | H7 · Registro de producción y cumplimiento | milestone | 0d | 2028-05-17 | 2028-05-17 | 252SS | 0 |
| 255 | H9 · Entrega de expediente | milestone | 0d | 2028-05-18 | 2028-05-18 | 245FS-1d | 0 |
| 256 | 6.3.2 Pruebas de carga con ambas etapas activas y de resiliencia |  | 10d | 2028-05-19 | 2028-06-01 | 245 | 10 |
| 257 | 6.4.2 Prueba de recuperación ante desastres con ambas etapas |  | 10d | 2028-05-19 | 2028-06-01 | 245 | 10 |
| 258 | 6.5.2 Prueba de seguridad ofensiva de la Etapa 2, por un tercero independiente |  | 6d | 2028-05-19 | 2028-05-26 | 245 | 6 |
| 259 | 6.6.2 Demostración en Preproducción del despliegue sin interrupción de la Etapa 2 |  | 10d | 2028-05-19 | 2028-06-01 | 245 | 10 |
| 260 | H9 · Revisión de la Contraparte (10 días hábiles) |  | 10d | 2028-05-19 | 2028-06-01 | 255FS+1d | 10 |
| 261 | 7.4.1 Innovación 4: fórmula aprobada del tramo variable (INN-04.P1) |  | 7d | 2028-06-01 | 2028-06-09 | 237FS+23d | 7 |
| 262 | 9.1.3 Plan de implantación y reversión de la Etapa 2 |  | 7d | 2028-06-01 | 2028-06-09 | 214FS+123d, 245FS+9d | 7 |
| 263 | H9 · Firma del acta | milestone | 0d | 2028-06-01 | 2028-06-01 | 260FS-1d | 0 |
| 264 | 6.2.3 Pruebas de aceptación y de accesibilidad con cadenas, transportistas, Comercial y Finanzas |  | 10d | 2028-06-02 | 2028-06-15 | 245FS+10d | 10 |
| 265 | 6.7.2 Acta de certificación de la Etapa 2 y cierre del desarrollo (H10) |  | 7d | 2028-06-16 | 2028-06-28 | 245FS+20d, 256FS+10d, 257FS+10d, 258FS+14d, 259FS+10d, 264 | 7 |
| 266 | H10 · Entrega de expediente | milestone | 0d | 2028-06-27 | 2028-06-27 | 267SS | 0 |
| 267 | H10 · Evidencia disponible (6.7.2) | milestone | 0d | 2028-06-27 | 2028-06-27 | 245FS+25d, 256FS+15d, 257FS+15d, 258FS+19d, 259FS+15d, 264FS+5d, 265SS+5d | 0 |
| 268 | 6.7.2 · Cierre del paquete | milestone | 0d | 2028-06-28 | 2028-06-28 | 265FS-1d, 267SS+1d | 0 |
| 269 | H10 · Revisión de la Contraparte (10 días hábiles) |  | 10d | 2028-06-28 | 2028-07-11 | 266FS+1d | 10 |
| 270 | 7.5.4 Innovación 5: hoja certificada, en marcha blanca y en producción (INN-05.P4, primera parte) |  | 62d | 2028-07-03 | 2028-09-29 | 241FS+13d | 62 |
| 271 | 9.5.8 Certificación de Comercial y Finanzas en costo de servir (Etapa 2) |  | 17d | 2028-07-03 | 2028-07-25 | 237FS+43d, 264FS+9d | 17 |
| 272 | H10 · Firma del acta | milestone | 0d | 2028-07-11 | 2028-07-11 | 269FS-1d | 0 |
| 273 | 9.2.2 Marcha blanca de la Etapa 2 |  | 42d | 2028-08-01 | 2028-10-02 | 274SS | 41 |
| 274 | H11 · Inicio contractual de marcha blanca | milestone | 0d | 2028-08-01 | 2028-08-01 | 175FS+41d, 262FS+34d, 272FS+15d, 275SS | 0 |
| 275 | H11 · Entrega de expediente | milestone | 0d | 2028-08-01 | 2028-08-01 |  | 0 |
| 276 | E2 · Cadenas habilitadas antes de F − 28 | milestone | 0d | 2028-08-31 | 2028-08-31 | 244FS+32d | 0 |
| 277 | 9.4.3 Garantía de correcto funcionamiento constituida (H12) |  | 7d | 2028-09-13 | 2028-09-25 | 272FS+45d | 7 |
| 278 | H12 · Cierre de cuatro semanas de evidencia | milestone | 0d | 2028-09-30 | 2028-09-30 | 273FS-1d, 276FS+20d | 0 |
| 279 | Mes 21 · Cobertura de transición previa al corte E2 |  | 12d | 2028-10-01 | 2028-10-18 |  | 11 |
| 280 | 6.8.6 Entrega del código fuente, la infraestructura como código y los procedimientos de despliegue |  | 7d | 2028-10-02 | 2028-10-11 | 272FS+58d | 7 |

Notes:
- 211: 240 HH · responsable DAT · ejecución DAT · 7.1.2 y 7.1.3
- 212: 240 HH · responsable CAL · ejecución CAL · 7.2.3
- 213: 240 HH · responsable DAT · ejecución DAT · 7.3.3
- 214: 80 HH · responsable IMP · ejecución IMP · 9.1.1, 5.4.2, 6.2.1 (D-49)
- 215: 160 HH · responsable CAL · ejecución CAL · 6.2.1, 6.2.2, 6.3.1, 6.4.1, 6.5.1, 6.6.1
- 216: 480 HH · responsable DAT · ejecución DAT · 5.4.1, 5.4.2, 5.4.3, 5.4.4
- 218: 80 HH · responsable ARQ · ejecución ARQ · 6.7.1
- 219: 240 HH · responsable ARQ · ejecución ARQ · 2.1.2 CC
- 220: 240 HH · responsable IMP · ejecución IMP · 4.3.3, 2.1.2 CC
- 221: 160 HH · responsable IMP · ejecución IMP · 9.5.1, 9.2.1 CC
- 226: 240 HH · responsable ARQ · ejecución ARQ · 2.1.2, 2.2.4
- 228: Línea base y diseño detallado; cierre administrativo posterior
- 229: 240 HH · responsable ARQ · ejecución ARQ · 2.1.2, 2.2.4
- 232: 240 HH · responsable IMP · ejecución IMP · 7.5.1 (prototipo inicial)
- 234: 1033.17 HH · responsable DES · ejecución DES · 2.1.2, 2.8.2 (D-29)
- 235: 973 HH · responsable DES · ejecución DES · 2.1.2, 2.8.2 (D-29)
- 236: 280 HH · responsable DES · ejecución DES · 2.1.2, 2.8.2 (D-29)
- 237: 653 HH · responsable DAT · ejecución DAT · 2.1.2, 2.8.2 (D-29)
- 238: 240 HH · responsable IMP · ejecución IMP · 4.3.3, 2.1.2 CC
- 240: 80 HH · responsable JP · ejecución JP · 1.6.1
- 241: 240 HH · responsable IMP · ejecución IMP · 7.5.1 y 7.5.2 (diseño validado)
- 242: 240 HH · responsable IMP · ejecución IMP · 7.5.1 (prototipo inicial)
- 244: 508 HH · responsable DES · ejecución DES · 2.1.5 (perfil de intercambio), 5.3.1 CC, 4.4.1 (QA)
- 245: 160 HH · responsable CAL · ejecución CAL · 4.4.1, 4.4.2, 4.4.3 y 4.5.2
- 246: 80 HH · responsable JP · ejecución JP · Cierre de evidencia 9.2.1 y 9.5.7; revisión, firma, corte y registro (D-28)
- 247: 160 HH · responsable IMP · ejecución IMP · 2.8.2, 5.3.1 CC
- 253: 80 HH · responsable JP · ejecución JP · Cierre de evidencia 9.2.1 y 9.5.7; revisión, firma, corte y registro (D-28)
- 256: 320 HH · responsable CAL · ejecución CAL · 6.1.2
- 257: 320 HH · responsable CAL · ejecución CAL · 6.1.2
- 258: 160 HH · responsable SEG · ejecución SEG · 6.1.2
- 259: 160 HH · responsable SRE · ejecución SRE · 6.1.2
- 261: 80 HH · responsable JP · ejecución JP · 4.5.2
- 262: 80 HH · responsable IMP · ejecución IMP · 9.1.2, 6.1.2 (D-50)
- 264: 320 HH · responsable CAL · ejecución CAL · 6.1.2
- 265: 160 HH · responsable CAL · ejecución CAL · 6.1.2, 6.2.3, 6.3.2, 6.4.2, 6.5.2, 6.6.2
- 267: Integración y pruebas aprobadas; cierre documental posterior
- 268: 160 HH · responsable CAL · ejecución CAL · 6.1.2, 6.2.3, 6.3.2, 6.4.2, 6.5.2, 6.6.2
- 270: 240 HH · responsable IMP · ejecución IMP · 7.5.3
- 271: 160 HH · responsable IMP · ejecución IMP · 4.5.2, 6.2.3
- 277: 80 HH · responsable JP · ejecución JP · 6.7.2
- 280: 80 HH · responsable DES · ejecución DES · 6.7.2

| ID | Task | Type | Duration | Start | Finish | Predecessors | Días hábiles T-15 |
| --- | --- | --- | --- | --- | --- | --- | --- |
| 281 | 9.4.2 Expediente y acta de aceptación final (H12) |  | 12d | 2028-10-02 | 2028-10-18 | 282SS | 12 |
| 282 | H12 · Entrega de expediente | milestone | 0d | 2028-10-02 | 2028-10-02 | 239FS+1d, 271FS+47d, 277FS+6d, 278FS+2d | 0 |
| 283 | H12 · Revisión de la Contraparte (10 días hábiles) |  | 10d | 2028-10-03 | 2028-10-17 | 282FS+1d | 10 |
| 284 | H12 · Firma del acta | milestone | 0d | 2028-10-17 | 2028-10-17 | 280FS+3d, 283FS-1d | 0 |
| 285 | 9.3.2 Estabilización de la Etapa 2 |  | 30d | 2028-10-18 | 2028-11-30 | 286SS | 30 |
| 286 | H12 · Paso a producción | milestone | 0d | 2028-10-18 | 2028-10-18 | 284FS+1d | 0 |
| 287 | 9.4.2 · Cierre del paquete | milestone | 0d | 2028-10-18 | 2028-10-18 | 281FS-1d, 289SS | 0 |
| 288 | Producto 10 · Operación con ambos alcances (meses 21 a 56) |  | 730d | 2028-10-18 | 2031-09-30 | 279, 286SS | 730 |
| 289 | H12 · Registro de producción y cumplimiento | milestone | 0d | 2028-10-18 | 2028-10-18 | 286SS | 0 |
| 290 | 1.7.9 Informe de lecciones aprendidas y archivo de la implementación |  | 7d | 2028-10-26 | 2028-11-07 | 287SS+6d | 7 |
| 291 | 10.5.1 Traspaso de reversibilidad y acompañamiento de salida |  | 40d | 2031-08-01 | 2031-09-30 |  | 40 |
| 292 | 10.5.2 Certificado de devolución o eliminación de datos personales |  | 7d | 2031-09-01 | 2031-09-09 | 291SS+20d | 7 |

Notes:
- 281: 80 HH · responsable JP · ejecución JP · Cierre de evidencia 9.2.2, 9.4.3, 9.5.4 y 9.5.8; 6.8.6 antes de la firma (D-33)
- 287: 80 HH · responsable JP · ejecución JP · Cierre de evidencia 9.2.2, 9.4.3, 9.5.4 y 9.5.8; 6.8.6 antes de la firma (D-33)
- 290: 80 HH · responsable JP · ejecución JP · 9.4.2
- 292: 80 HH · responsable SEG · ejecución SEG · 10.5.1 CC
